# livechat100

Schedule from MS Project, 2017-12-04 to 2018-01-02, A marks actual dates.

## Calendars

- Standard: Mon-Fri 08:00-12:00, 13:00-17:00; Sat-Sun off.

## Resources

| Resource |
| --- |
| Damon |
| Stanley |
| Allon |
| Mark |

## Schedule

| ID | WBS | Task | Type | Duration | Start | Finish | Complete | Remaining | Total slack | Resources | Work | Actual work |
| --- | --- | --- | --- | --- | --- | --- | --- | --- | --- | --- | --- | --- |
| 1 | 1 | **开发** |  | 22d | 2017-12-04 A | 2018-01-02 | 19% | 17.85d | 0d |  | 712h | 132.8h |
| 2 | 1.1 | 前端样式 | manual | 10d | 2017-12-04 A | 2017-12-15 | 90% | 1d |  | Mark | 80h | 72h |
| 3 | 1.2 | **Feature功能开发** |  | 17d | 2017-12-11 A | 2018-01-02 | 10% | 15.34d |  |  | 632h | 60.8h |
| 4 | 1.2.1 | Visitor Side | manual | 2d | 2017-12-11 A | 2017-12-12 A | 100% |  |  | Stanley | 16h | 16h |
| 5 | 1.2.2 | Agnet Console | manual | 3d | 2017-12-13 A | 2017-12-15 A | 100% |  |  | Stanley | 24h | 24h |
| 6 | 1.2.3 | Chat Server | manual | 1d | 2017-12-22 | 2017-12-22 |  |  |  | Allon | 8h |  |
| 7 | 1.2.4 | **LiveChat-Portal** |  | 10d | 2017-12-18 A | 2017-12-29 | 5% | 9.54d | 0d |  | 456h | 20.8h |
| 8 | 1.2.4.1 | Master Page | manual | 2d | 2017-12-18 A | 2017-12-19 A | 100% |  |  | Stanley | 16h | 16h |
| 9 | 1.2.4.2 | FeaturePoints | manual | 2d | 2017-12-20 A | 2017-12-21 | 30% | 1.4d |  | Stanley | 16h | 4.8h |
| 10 | 1.2.4.3 | Upgrade | manual | 1d | 2017-12-22 | 2017-12-22 |  |  |  | Stanley | 8h |  |
| 11 | 1.2.4.4 | Plan Feature | manual | 1d | 2017-12-21 | 2017-12-21 |  |  |  | Damon | 8h |  |
| 12 | 1.2.4.5 | Site Feature | manual | 1d | 2017-12-22 | 2017-12-22 |  |  |  | Damon | 8h |  |
| 13 | 1.2.4.6 | Dashboard (4) | manual | 1d | 2017-12-25 | 2017-12-25 |  |  |  | Stanley | 8h |  |
| 14 | 1.2.4.7 | **Campaign** |  | 2d | 2017-12-26 | 2017-12-27 |  |  |  |  | 88h |  |
| 15 | 1.2.4.7.1 | Chat Button (1) | manual | 1d | 2017-12-26 | 2017-12-26 |  |  |  | Stanley | 8h |  |
| 16 | 1.2.4.7.2 | Chat Window (4) | manual | 1d | 2017-12-26 | 2017-12-26 |  |  |  | Stanley | 8h |  |
| 17 | 1.2.4.7.3 | Pre-Chat (3) | manual | 1d | 2017-12-26 | 2017-12-26 |  |  |  | Stanley | 8h |  |
| 18 | 1.2.4.7.4 | Post Chat (3) | manual | 1d | 2017-12-26 | 2017-12-26 |  |  |  | Stanley | 8h |  |
| 19 | 1.2.4.7.5 | Offline Message (3) | manual | 1d | 2017-12-26 | 2017-12-26 |  |  |  | Stanley | 8h |  |
| 20 | 1.2.4.7.6 | Invitation (6) | manual | 1d | 2017-12-27 | 2017-12-27 |  |  |  | Stanley | 8h |  |
| 21 | 1.2.4.7.7 | Agent Wrap-up (3) | manual | 1d | 2017-12-27 | 2017-12-27 |  |  |  | Stanley | 8h |  |
| 22 | 1.2.4.7.8 | Language | manual | 1d | 2017-12-27 | 2017-12-27 |  |  |  | Stanley | 8h |  |
| 23 | 1.2.4.7.9 | Chat Bot (3) | manual | 1d | 2017-12-27 | 2017-12-27 |  |  |  | Stanley | 8h |  |
| 24 | 1.2.4.7.10 | Routing Rules (3) | manual | 1d | 2017-12-27 | 2017-12-27 |  |  |  | Stanley | 8h |  |
| 25 | 1.2.4.7.11 | Multiple Campaigns (2) | manual | 1d | 2017-12-27 | 2017-12-27 |  |  |  | Stanley | 8h |  |

| ID | WBS | Task | Type | Duration | Start | Finish | Resources | Work |
| --- | --- | --- | --- | --- | --- | --- | --- | --- |
| 26 | 1.2.4.8 | **Settings** |  | 2d | 2017-12-28 | 2017-12-29 |  | 88h |
| 27 | 1.2.4.8.1 | Canned Messages (1) | manual | 1d | 2017-12-28 | 2017-12-28 | Stanley | 8h |
| 28 | 1.2.4.8.2 | Departments (2) | manual | 1d | 2017-12-28 | 2017-12-28 | Stanley | 8h |
| 29 | 1.2.4.8.3 | Auto Accept Chat (3) | manual | 1d | 2017-12-28 | 2017-12-28 | Stanley | 8h |
| 30 | 1.2.4.8.4 | Auto Allocation (2) | manual | 1d | 2017-12-28 | 2017-12-28 | Stanley | 8h |
| 31 | 1.2.4.8.5 | Custom Away Status (2) | manual | 1d | 2017-12-28 | 2017-12-28 | Stanley | 8h |
| 32 | 1.2.4.8.6 | Auto Translation (2) | manual | 1d | 2017-12-29 | 2017-12-29 | Stanley | 8h |
| 33 | 1.2.4.8.7 | Audio & Video Chat (2) | manual | 1d | 2017-12-29 | 2017-12-29 | Stanley | 8h |
| 34 | 1.2.4.8.8 | Visitor Segmentation (3) | manual | 1d | 2017-12-29 | 2017-12-29 | Stanley | 8h |
| 35 | 1.2.4.8.9 | Secure Forms (2) | manual | 1d | 2017-12-29 | 2017-12-29 | Stanley | 8h |
| 36 | 1.2.4.8.10 | Credit Card Masking (2) | manual | 1d | 2017-12-29 | 2017-12-29 | Stanley | 8h |
| 37 | 1.2.4.8.11 | Visitor SSO (2) | manual | 1d | 2017-12-29 | 2017-12-29 | Stanley | 8h |
| 38 | 1.2.4.9 | Chat-bot Question Base (3) | manual | 1d | 2017-12-18 | 2017-12-18 | Damon | 8h |
| 39 | 1.2.4.10 | **Security** |  | 1d | 2017-12-25 | 2017-12-25 |  | 32h |
| 40 | 1.2.4.10.1 | Permissions (2) | manual | 1d | 2017-12-25 | 2017-12-25 | Damon | 8h |
| 41 | 1.2.4.10.2 | Password Policy (2) | manual | 1d | 2017-12-25 | 2017-12-25 | Damon | 8h |
| 42 | 1.2.4.10.3 | IP Restrictions (2) | manual | 1d | 2017-12-25 | 2017-12-25 | Damon | 8h |
| 43 | 1.2.4.10.4 | Audit Log (2) | manual | 1d | 2017-12-25 | 2017-12-25 | Damon | 8h |
| 44 | 1.2.4.11 | **History** |  | 1d | 2017-12-26 | 2017-12-26 |  | 32h |
| 45 | 1.2.4.11.1 | Chats (5) | manual | 1d | 2017-12-26 | 2017-12-26 | Damon | 8h |
| 46 | 1.2.4.11.2 | Messages (4) | manual | 1d | 2017-12-26 | 2017-12-26 | Damon | 8h |
| 47 | 1.2.4.11.3 | Agent Chats (4) | manual | 1d | 2017-12-26 | 2017-12-26 | Damon | 8h |
| 48 | 1.2.4.11.4 | Missed & Refused (2) | manual | 1d | 2017-12-26 | 2017-12-26 | Damon | 8h |
| 49 | 1.2.4.12 | **Report** |  | 3d | 2017-12-27 | 2017-12-29 |  | 144h |
| 50 | 1.2.4.12.1 | Real Time (15) | manual | 1d | 2017-12-27 | 2017-12-27 | Damon | 8h |
| 51 | 1.2.4.12.2 | Queue (4) | manual | 1d | 2017-12-27 | 2017-12-27 | Damon | 8h |
| 52 | 1.2.4.12.3 | Wait Time (4) | manual | 1d | 2017-12-27 | 2017-12-27 | Damon | 8h |
| 53 | 1.2.4.12.4 | Chat Transfer (4) | manual | 1d | 2017-12-27 | 2017-12-27 | Damon | 8h |
| 54 | 1.2.4.12.5 | Agent Performance (5) | manual | 1d | 2017-12-27 | 2017-12-27 | Damon | 8h |
| 55 | 1.2.4.12.6 | Workload (4) | manual | 1d | 2017-12-27 | 2017-12-27 | Damon | 8h |
| 56 | 1.2.4.12.7 | Efficiency (4) | manual | 1d | 2017-12-28 | 2017-12-28 | Damon | 8h |
| 57 | 1.2.4.12.8 | Rating (4) | manual | 1d | 2017-12-28 | 2017-12-28 | Damon | 8h |
| 58 | 1.2.4.12.9 | Pre Chat Survey (4) | manual | 1d | 2017-12-28 | 2017-12-28 | Damon | 8h |
| 59 | 1.2.4.12.10 | Post Chat Survey (4) | manual | 1d | 2017-12-28 | 2017-12-28 | Damon | 8h |
| 60 | 1.2.4.12.11 | Wrap up (4) | manual | 1d | 2017-12-28 | 2017-12-28 | Damon | 8h |
| 61 | 1.2.4.12.12 | Auto Invitation (4) | manual | 1d | 2017-12-28 | 2017-12-28 | Damon | 8h |
| 62 | 1.2.4.12.13 | Manual Invitation (4) | manual | 1d | 2017-12-29 | 2017-12-29 | Damon | 8h |
| 63 | 1.2.4.12.14 | Offline Message (5) | manual | 1d | 2017-12-29 | 2017-12-29 | Damon | 8h |
| 64 | 1.2.4.12.15 | Canned Message (4) | manual | 1d | 2017-12-29 | 2017-12-29 | Damon | 8h |
| 65 | 1.2.4.12.16 | Chat bot (4) | manual | 1d | 2017-12-29 | 2017-12-29 | Damon | 8h |
| 66 | 1.2.4.12.17 | Chat Source (4) | manual | 1d | 2017-12-29 | 2017-12-29 | Damon | 8h |
| 67 | 1.2.4.12.18 | Chat Volume (5) | manual | 1d | 2017-12-29 | 2017-12-29 | Damon | 8h |

| ID | WBS | Task | Type | Duration | Start | Finish | Resources | Work |
| --- | --- | --- | --- | --- | --- | --- | --- | --- |
| 68 | 1.2.5 | **Billing** |  | 5d | 2017-12-20 | 2017-12-26 |  | 40h |
| 69 | 1.2.5.1 | **Select Live Chat Plan** |  | 4d | 2017-12-20 | 2017-12-25 |  | 32h |
| 70 | 1.2.5.1.1 | UI | manual | 3d | 2017-12-20 | 2017-12-22 | Mark | 24h |
| 71 | 1.2.5.1.2 | Feature Points | manual | 0.5d | 2017-12-25 | 2017-12-25 | Mark | 4h |
| 72 | 1.2.5.1.3 | Free Agent & Max Agent | manual | 0.5d | 2017-12-25 | 2017-12-25 | Mark | 4h |
| 73 | 1.2.5.2 | Choose Live Chat Plan - Add on | manual | 0.5d | 2017-12-26 | 2017-12-26 | Mark | 4h |
| 74 | 1.2.5.3 | Invoice | manual | 0.5d | 2017-12-26 | 2017-12-26 | Mark | 4h |
| 75 | 1.2.6 | **Account** |  | 2d | 2017-12-27 | 2017-12-28 |  | 56h |
| 76 | 1.2.6.1 | Dashboard (2) | manual | 1d | 2017-12-27 | 2017-12-27 | Mark | 8h |
| 77 | 1.2.6.2 | Agents | manual | 1d | 2017-12-27 | 2017-12-27 | Mark | 8h |
| 78 | 1.2.6.3 | Groups | manual | 1d | 2017-12-27 | 2017-12-27 | Mark | 8h |
| 79 | 1.2.6.4 | Permissions | manual | 1d | 2017-12-27 | 2017-12-27 | Mark | 8h |
| 80 | 1.2.6.5 | Password Policy | manual | 1d | 2017-12-28 | 2017-12-28 | Mark | 8h |
| 81 | 1.2.6.6 | IP Restrictions (3) | manual | 1d | 2017-12-28 | 2017-12-28 | Mark | 8h |
| 82 | 1.2.6.7 | Audit Log (2) | manual | 1d | 2017-12-28 | 2017-12-28 | Mark | 8h |
| 83 | 1.2.7 | **Cpanel** |  | 1d | 2017-12-29 | 2017-12-29 | Mark | 24h |
| 84 | 1.2.7.1 | Add/Edit Live Chat Plan | manual | 1d | 2017-12-29 | 2017-12-29 | Mark | 8h |
| 85 | 1.2.7.2 | Add On | manual | 1d | 2017-12-29 | 2017-12-29 | Mark | 8h |
| 86 | 1.2.8 | **Secure** |  | 1d | 2018-01-02 | 2018-01-02 |  | 8h |
| 87 | 1.2.8.1 | Register | manual | 1d | 2018-01-02 | 2018-01-02 | Mark | 8h |
